# TaskPlan - ISO Datatype - Option C

Schedule from MS Project, 2010-02-18 to 2010-05-20, A marks actual dates.
NIH/NCI

## Calendars

- Standard: Mon-Fri 08:00-12:00, 13:00-17:00; Sat-Sun off.

## Resources

| Resource |
| --- |
| SDK |
| caGrid |
| caAdapter |
| QA |

## Schedule

| ID | WBS | Task | Type | Duration | Start | Finish | Predecessors | Complete | Remaining | Total slack | Free slack | Constraint | Resources | Work | Actual work |
| --- | --- | --- | --- | --- | --- | --- | --- | --- | --- | --- | --- | --- | --- | --- | --- |
| 1 | 1 | **ISO Datatype support** |  | 65.5d | 2010-02-18 A | 2010-05-20 |  | 33% | 43.98d | 0d |  |  |  | 3668h | 988.8h |
| 2 | 1.1 | Kickoff |  | 1d | 2010-03-01 | 2010-03-01 |  |  |  | 54d |  | start no earlier than 2010-03-01 |  |  |  |
| 3 | 1.2 | **Implementation** |  | 55.5d | 2010-02-18 A | 2010-05-06 |  | 44% | 31.34d | 10d |  |  |  | 2308h | 988.8h |
| 4 | 1.2.1 | **ISO 21090 Library** |  | 20d | 2010-03-02 A | 2010-03-29 |  | 50% | 10d | 1d |  |  |  | 480h | 240h |
| 5 | 1.2.1.1 | Analyze COPPA Localized library |  | 5d | 2010-03-02 A | 2010-03-08 A | 2 | 100% |  |  |  |  | SDK; caGrid | 80h | 80h |
| 6 | 1.2.1.2 | Analyze COPPA serialization framework |  | 5d | 2010-03-02 A | 2010-03-08 A | 2 | 100% |  |  |  |  | SDK; caGrid | 80h | 80h |
| 7 | 1.2.1.3 | Analyze COPPA OR Mapping framework |  | 5d | 2010-03-02 A | 2010-03-08 A | 2 | 100% |  |  |  |  | SDK; caGrid | 80h | 80h |
| 8 | 1.2.1.4 | Implement enhancements in datatype library |  | 15d | 2010-03-09 | 2010-03-29 | 7 |  |  | 1d | 0d |  | SDK; caGrid | 240h |  |
| 9 | 1.2.1.5 | Baseline library code | milestone | 0d | 2010-03-29 | 2010-03-29 | 8 |  |  | 10d | 0d |  |  |  |  |
| 10 | 1.2.2 | **SDK Enhancements** |  | 43d | 2010-02-18 A | 2010-04-19 |  | 49% | 22.02d | 22.5d |  |  |  | 984h | 480h |
| 11 | 1.2.2.1 | Document short term and long term goals for the SDK |  | 10d | 2010-02-18 A | 2010-03-03 A |  | 100% |  |  |  |  | SDK | 80h | 80h |
| 12 | 1.2.2.2 | Create design document for tag value specification |  | 10d | 2010-03-09 A | 2010-03-22 | 7 | 90% | 1d | 41.5d | 0d |  | SDK | 80h | 72h |
| 13 | 1.2.2.3 | Create design document for Hibernate mapping |  | 15d | 2010-03-09 A | 2010-03-29 | 7 | 90% | 1.5d | 32.5d | 0d |  | SDK | 120h | 108h |
| 14 | 1.2.2.4 | Develop JAXB based serialization framework |  | 15d | 2010-03-09 A | 2010-03-29 | 7 | 80% | 3d | 24.5d | 0d |  | SDK | 120h | 96h |
| 15 | 1.2.2.5 | Create Test UML model |  | 5d | 2010-03-23 A | 2010-03-29 | 12 | 80% | 1d | 37.5d |  |  | SDK | 40h | 32h |
| 16 | 1.2.2.6 | Enhance SDK Java code generator for the ISO data types |  | 5d | 2010-03-23 A | 2010-03-29 | 13FS-5d | 80% | 1d | 37.5d |  |  | SDK | 40h | 32h |
| 17 | 1.2.2.7 | Enhance SDK ORM module for ISO data types |  | 10d | 2010-03-23 | 2010-04-05 | 13FS-5d |  |  | 32.5d |  |  | SDK | 80h |  |
| 18 | 1.2.2.8 | Enhance SDK service layer to support ISO data types |  | 15d | 2010-03-09 A | 2010-03-29 | 5 | 50% | 7.5d | 3.5d | 0d |  | SDK | 120h | 60h |
| 19 | 1.2.2.9 | Integrate ISO 21090 library in JAXB serialization |  | 8d | 2010-03-30 | 2010-04-08 | 18, 14 |  |  | 24.5d | 0d |  | SDK | 64h |  |
| 20 | 1.2.2.10 | Enhance SDK proxy framework for ISO data types |  | 5d | 2010-04-09 | 2010-04-15 | 19 |  |  | 24.5d |  |  | SDK | 40h |  |
| 21 | 1.2.2.11 | Enhance SDK RESTful query translator for ISO data types |  | 10d | 2010-03-30 | 2010-04-12 | 18 |  |  | 27.5d |  |  | SDK | 80h |  |
| 22 | 1.2.2.12 | Enhance BDA scripts for packaging and deployment |  | 10d | 2010-03-30 | 2010-04-12 | 5, 18 |  |  | 3.5d | 0d |  | SDK | 80h |  |
| 23 | 1.2.2.13 | Deliver baseline SDK | milestone | 0d | 2010-04-19 | 2010-04-19 | 24 |  |  | 19d |  |  |  |  |  |
| 24 | 1.2.2.14 | Unit test and defect fix |  | 5d | 2010-04-13 | 2010-04-19 | 22 |  |  | 3.5d | 0d |  | SDK | 40h |  |

| ID | WBS | Task | Type | Duration | Start | Finish | Predecessors | Complete | Remaining | Total slack | Free slack | Resources | Work | Actual work |
| --- | --- | --- | --- | --- | --- | --- | --- | --- | --- | --- | --- | --- | --- | --- |
| 25 | 1.2.3 | **caAdapter Enhancements** |  | 35d | 2010-03-02 A | 2010-04-19 |  | 43% | 20.12d | 22.5d |  |  | 320h | 136h |
| 26 | 1.2.3.1 | Document the short and long term scope of the caAdapter efforts |  | 5d | 2010-03-02 A | 2010-03-08 A | 2 | 100% |  |  |  | caAdapter | 40h | 40h |
| 27 | 1.2.3.2 | Enhance caAdapter to load ISO 21090 information |  | 10d | 2010-03-09 A | 2010-03-22 | 26 | 80% | 2d | 42.5d |  | caAdapter | 80h | 64h |
| 28 | 1.2.3.3 | Create template model |  | 5d | 2010-03-16 A | 2010-03-22 | 26 | 80% | 1d | 22.5d | 0d | caAdapter | 40h | 32h |
| 29 | 1.2.3.4 | Enhance caAdapter Model Mapping Service |  | 15d | 2010-03-23 | 2010-04-12 | 28 |  |  | 22.5d | 0d | caAdapter | 120h |  |
| 30 | 1.2.3.5 | Unit test and defect fix |  | 5d | 2010-04-13 | 2010-04-19 | 29 |  |  | 22.5d | 0d | caAdapter | 40h |  |
| 31 | 1.2.3.6 | Deliver baseline caAdapter | milestone | 0d | 2010-04-19 | 2010-04-19 | 30 |  |  | 22.5d |  |  |  |  |
| 32 | 1.2.4 | **caGrid Enhancements** |  | 38.5d | 2010-03-02 A | 2010-04-23 |  | 35% | 25.05d | 19d |  |  | 380h | 132.8h |
| 33 | 1.2.4.1 | Document the short and long term scope of the caGrid efforts |  | 5d | 2010-03-02 A | 2010-03-08 A | 2 | 100% |  |  |  | caGrid | 40h | 40h |
| 34 | 1.2.4.2 | Create design document for ISO Introduce Extension |  | 4d | 2010-03-09 A | 2010-03-12 | 33 | 80% | 0.8d | 44.9d | 0d | caGrid | 32h | 25.6h |
| 35 | 1.2.4.3 | Create Introduce data types extension for adding ISODatatypes to a service |  | 5d | 2010-03-15 A | 2010-03-19 | 34 | 60% | 2d | 41.9d | 0d | caGrid | 40h | 24h |
| 36 | 1.2.4.4 | Create Service Development Process Documentation for ISO datatypes |  | 2d | 2010-03-22 A | 2010-03-23 | 35 | 60% | 0.8d | 40.7d | 0d | caGrid | 16h | 9.6h |
| 37 | 1.2.4.5 | Develop UI component for Introduce data types extension for adding ISODatatypes to a service |  | 2d | 2010-03-24 A | 2010-03-25 | 36 | 60% | 0.8d | 39.5d |  | caGrid | 16h | 9.6h |
| 38 | 1.2.4.6 | Review SDK database/usertype approach |  | 2d | 2010-03-30 A | 2010-03-31 | 9 | 50% | 1d | 0d |  | caGrid | 16h | 8h |
| 39 | 1.2.4.7 | Prototype SDK/caGrid query exchange |  | 10d | 2010-04-01 | 2010-04-14 | 38 |  |  | 0d |  | caGrid | 80h |  |
| 40 | 1.2.4.8 | Design CQL to HQL general approach for SDK managed ISO datatypes |  | 10d | 2010-04-01 A | 2010-04-14 | 38 | 20% | 8d | 25.5d |  | caGrid | 80h | 16h |
| 41 | 1.2.4.9 | Make ISO client libraries available via download (e.g. any specialized data service client libraries, etc) |  | 0.5d | 2010-04-15 | 2010-04-15 | 39 |  |  | 0d |  | caGrid | 4h |  |
| 42 | 1.2.4.10 | Upload ISO datatype extension to Introduce Update Site |  | 0.5d | 2010-04-15 | 2010-04-15 | 41 |  |  | 0d |  | caGrid | 4h |  |
| 43 | 1.2.4.11 | Upload ISO datatype data service extension/style to Introduce Update Site |  | 0.5d | 2010-04-16 | 2010-04-16 | 42 |  |  | 0d |  | caGrid | 4h |  |
| 44 | 1.2.4.12 | Ivyify retrieval of dependency on common project |  | 1d | 2010-04-16 | 2010-04-19 | 43 |  |  | 23d |  | caGrid | 8h |  |
| 45 | 1.2.4.13 | Unit test and defect fix |  | 5d | 2010-04-16 | 2010-04-23 | 43 |  |  | 0d |  | caGrid | 40h |  |
| 46 | 1.2.4.14 | Deliver baseline caGrid components | milestone | 0d | 2010-04-23 | 2010-04-23 | 45 |  |  | 0d |  | caGrid |  |  |
| 47 | 1.2.4.15 | Deliver SDK and caGrid alpha version | milestone | 0d | 2010-05-06 | 2010-05-06 | 48 |  |  | 0d |  |  |  |  |
| 48 | 1.2.4.16 | Integration testing and defect fixing |  | 9d | 2010-04-23 | 2010-05-06 | 24, 46 |  |  | 0d |  | SDK; caGrid | 144h |  |
| 49 | 1.2.5 | SDK/caGrid Integration |  | 9d | 2010-04-23 | 2010-05-06 |  |  |  | 0d |  |  | 144h |  |
| 50 | 1.2.6 | Prepare test plan |  | 10d | 2010-03-30 | 2010-04-12 | 9 |  |  | 27.5d |  | QA; SDK; caGrid | 240h |  |

| ID | WBS | Task | Type | Duration | Start | Finish | Predecessors | Total slack | Resources | Work |
| --- | --- | --- | --- | --- | --- | --- | --- | --- | --- | --- |
| 51 | 1.3 | **QA Testing** |  | 37.5d | 2010-03-30 | 2010-05-20 |  | 0d |  | 480h |
| 52 | 1.3.1 | Execute test cases |  | 10d | 2010-05-06 | 2010-05-20 | 47 | 0d | QA | 80h |
| 53 | 1.3.2 | Deliver SDK, caGrid, caAdapter | milestone | 0d | 2010-05-20 | 2010-05-20 | 54 | 0d |  |  |
| 54 | 1.3.3 | Provide test support |  | 10d | 2010-05-06 | 2010-05-20 | 47 | 0d | SDK; caGrid | 160h |
| 55 | 1.4 | **User Documentation** |  | 10d | 2010-05-06 | 2010-05-20 |  | 0d |  | 880h |
| 56 | 1.4.1 | Develop reference service and limited tutorial |  | 10d | 2010-05-06 | 2010-05-20 | 47, 27 | 0d | caGrid | 80h |
| 57 | 1.4.2 | Develop developer guide documentation for data type extension |  | 10d | 2010-05-06 | 2010-05-20 | 47 | 0d | caGrid | 80h |
| 58 | 1.4.3 | Prepare developers guide for service developers with ISO 21090 datatypes |  | 10d | 2010-05-06 | 2010-05-20 | 47 | 0d | SDK; caGrid; caAdapter | 240h |
| 59 | 1.4.4 | Prepare user guide |  | 10d | 2010-05-06 | 2010-05-20 | 47 | 0d | SDK; caGrid; caAdapter | 240h |
| 60 | 1.4.5 | Deliver installation and user guide | milestone | 0d | 2010-05-20 | 2010-05-20 | 59, 61 | 0d |  |  |
| 61 | 1.4.6 | Prepare installation guide |  | 10d | 2010-05-06 | 2010-05-20 | 47 | 0d | SDK; caGrid; caAdapter | 240h |
